# xpera CRM

Schedule from MS Project XML, 2026-10-30 to 2026-12-09.

## Calendars

- xpera Mon-Fri: Mon-Fri 08:00-12:00, 13:00-17:00; Sat-Sun off.

## Resources

| Resource | Rate | Cost per use |
| --- | --- | --- |
| Unassigned |  |  |
| Nicho FD | 130 |  |
| Nicho BD | 150 |  |
| Nicho QA | 110 |  |
| Hosting |  | 15 |
| Domain |  | 8 |
| Cloud Database |  | 18 |

## Schedule

| ID | WBS | Task | Duration | Start | Finish | Predecessors | Complete | Baseline start | Baseline finish | Resources |
| --- | --- | --- | --- | --- | --- | --- | --- | --- | --- | --- |
| 1 | 1 | **xpera CRM** | 40.48d | 2026-10-30 08:00 | 2026-12-09 11:50 |  | 1% | 2026-10-30 08:00 | 2026-12-14 17:00 |  |
| 2 | 1.1 | **Lab 1 · Tenant A** | 5.48d | 2026-10-30 08:00 | 2026-11-04 11:50 |  | 4% | 2026-10-30 08:00 | 2026-11-09 17:00 |  |
| 3 | 1.1.1 | **UC-01 Manage Staff Accounts** | 0.66d | 2026-10-30 08:00 | 2026-10-30 14:16 |  | 36% | 2026-10-30 08:00 | 2026-10-31 10:00 |  |
| 4 | 1.1.1.1 | Front-End | 0.3d | 2026-10-30 08:00 | 2026-10-30 10:24 |  | 80% | 2026-10-30 08:00 | 2026-10-30 13:00 | Nicho FD |
| 5 | 1.1.1.2 | Back-End | 0.2d | 2026-10-30 10:24 | 2026-10-30 13:00 | 4 |  | 2026-10-30 13:00 | 2026-10-30 17:00 | Nicho BD |
| 6 | 1.1.1.3 | Quality Assurance | 0.16d | 2026-10-30 13:00 | 2026-10-30 14:16 | 5 |  | 2026-10-31 08:00 | 2026-10-31 10:00 | Nicho QA |
| 7 | 1.1.2 | **UC-02 Manage Products** | 0.64d | 2026-10-30 14:16 | 2026-10-31 10:24 |  |  | 2026-10-31 10:00 | 2026-11-01 13:00 |  |
| 8 | 1.1.2.1 | Front-End | 0.3d | 2026-10-30 14:16 | 2026-10-30 16:40 | 6 |  | 2026-10-31 10:00 | 2026-10-31 15:00 | Nicho FD |
| 9 | 1.1.2.2 | Back-End | 0.2d | 2026-10-30 16:40 | 2026-10-31 09:16 | 8 |  | 2026-10-31 15:00 | 2026-11-01 10:00 | Nicho BD |
| 10 | 1.1.2.3 | Quality Assurance | 0.14d | 2026-10-31 09:16 | 2026-10-31 10:24 | 9 |  | 2026-11-01 10:00 | 2026-11-01 13:00 | Nicho QA |
| 11 | 1.1.3 | **UC-03 Manage Customer Records** | 0.91d | 2026-10-31 10:24 | 2026-11-01 09:40 |  |  | 2026-11-01 13:00 | 2026-11-02 15:00 |  |
| 12 | 1.1.3.1 | Front-End | 0.38d | 2026-10-31 10:24 | 2026-10-31 14:26 | 10 |  | 2026-11-01 13:00 | 2026-11-01 17:00 | Nicho FD |
| 13 | 1.1.3.2 | Back-End | 0.35d | 2026-10-31 14:26 | 2026-11-01 08:14 | 12 |  | 2026-11-02 08:00 | 2026-11-02 13:00 | Nicho BD |
| 14 | 1.1.3.3 | Quality Assurance | 0.18d | 2026-11-01 08:14 | 2026-11-01 09:40 | 13 |  | 2026-11-02 13:00 | 2026-11-02 15:00 | Nicho QA |
| 15 | 1.1.4 | **UC-04 Record Sale** | 0.89d | 2026-11-01 09:40 | 2026-11-02 08:48 |  |  | 2026-11-02 15:00 | 2026-11-05 10:00 |  |
| 16 | 1.1.4.1 | Front-End | 0.4d | 2026-11-01 09:40 | 2026-11-01 13:52 | 14 |  | 2026-11-02 15:00 | 2026-11-03 15:00 | Nicho FD |
| 17 | 1.1.4.2 | Back-End | 0.35d | 2026-11-01 13:52 | 2026-11-01 16:40 | 16 |  | 2026-11-03 15:00 | 2026-11-04 15:00 | Nicho BD |
| 18 | 1.1.4.3 | Quality Assurance | 0.14d | 2026-11-01 16:40 | 2026-11-02 08:48 | 17 |  | 2026-11-04 15:00 | 2026-11-05 10:00 | Nicho QA |
| 19 | 1.1.5 | **UC-05 Record Payment** | 0.85d | 2026-11-02 08:48 | 2026-11-02 16:36 |  |  | 2026-11-05 10:00 | 2026-11-06 13:00 |  |
| 20 | 1.1.5.1 | Front-End | 0.3d | 2026-11-02 08:48 | 2026-11-02 11:12 | 18 |  | 2026-11-05 10:00 | 2026-11-05 15:00 | Nicho FD |
| 21 | 1.1.5.2 | Back-End | 0.3d | 2026-11-02 11:12 | 2026-11-02 14:36 | 20 |  | 2026-11-05 15:00 | 2026-11-06 10:00 | Nicho BD |
| 22 | 1.1.5.3 | Quality Assurance | 0.25d | 2026-11-02 14:36 | 2026-11-02 16:36 | 21 |  | 2026-11-06 10:00 | 2026-11-06 13:00 | Nicho QA |
| 23 | 1.1.6 | **UC-06 Manage Inquiries** | 0.57d | 2026-11-02 16:36 | 2026-11-03 13:09 |  |  | 2026-11-06 13:00 | 2026-11-07 15:00 |  |
| 24 | 1.1.6.1 | Front-End | 0.25d | 2026-11-02 16:36 | 2026-11-03 09:36 | 22 |  | 2026-11-06 13:00 | 2026-11-06 17:00 | Nicho FD |
| 25 | 1.1.6.2 | Back-End | 0.2d | 2026-11-03 09:36 | 2026-11-03 11:12 | 24 |  | 2026-11-07 08:00 | 2026-11-07 13:00 | Nicho BD |
| 26 | 1.1.6.3 | Quality Assurance | 0.12d | 2026-11-03 11:12 | 2026-11-03 13:09 | 25 |  | 2026-11-07 13:00 | 2026-11-07 15:00 | Nicho QA |

| ID | WBS | Task | Duration | Start | Finish | Predecessors | Baseline start | Baseline finish | Resources |
| --- | --- | --- | --- | --- | --- | --- | --- | --- | --- |
| 27 | 1.1.7 | **UC-07 Manage Complaints** | 0.44d | 2026-11-03 13:09 | 2026-11-03 16:40 |  | 2026-11-07 15:00 | 2026-11-08 17:00 |  |
| 28 | 1.1.7.1 | Front-End | 0.3d | 2026-11-03 13:09 | 2026-11-03 15:33 | 26 | 2026-11-07 15:00 | 2026-11-08 10:00 | Nicho FD |
| 29 | 1.1.7.2 | Back-End | 0.12d | 2026-11-03 15:33 | 2026-11-03 16:31 | 28 | 2026-11-08 10:00 | 2026-11-08 15:00 | Nicho BD |
| 30 | 1.1.7.3 | Quality Assurance | 0.02d | 2026-11-03 16:31 | 2026-11-03 16:40 | 29 | 2026-11-08 15:00 | 2026-11-08 17:00 | Nicho QA |
| 31 | 1.1.8 | **UC-08 Record Feedback** | 0.52d | 2026-11-03 16:40 | 2026-11-04 11:50 |  | 2026-11-09 08:00 | 2026-11-09 17:00 |  |
| 32 | 1.1.8.1 | Front-End | 0.33d | 2026-11-03 16:40 | 2026-11-04 10:19 | 30 | 2026-11-09 08:00 | 2026-11-09 13:00 | Nicho FD |
| 33 | 1.1.8.2 | Back-End | 0.15d | 2026-11-04 10:19 | 2026-11-04 11:31 | 32 | 2026-11-09 13:00 | 2026-11-09 15:00 | Nicho BD |
| 34 | 1.1.8.3 | Quality Assurance | 0.04d | 2026-11-04 11:31 | 2026-11-04 11:50 | 33 | 2026-11-09 15:00 | 2026-11-09 17:00 | Nicho QA |
| 35 | 1.2 | **Lab 2 · Tenant B** | 6d | 2026-11-04 11:50 | 2026-11-10 11:50 |  | 2026-11-10 08:00 | 2026-11-15 17:00 |  |
| 36 | 1.2.1 | **UC-09 View BI Dashboard** | 2.25d | 2026-11-04 11:50 | 2026-11-06 14:50 |  | 2026-11-10 08:00 | 2026-11-12 10:00 |  |
| 37 | 1.2.1.1 | Front-End | 1d | 2026-11-04 11:50 | 2026-11-05 11:50 | 34 | 2026-11-10 08:00 | 2026-11-10 17:00 | Nicho FD |
| 38 | 1.2.1.2 | Back-End | 1d | 2026-11-05 11:50 | 2026-11-06 11:50 | 37 | 2026-11-11 08:00 | 2026-11-11 17:00 | Nicho BD |
| 39 | 1.2.1.3 | Quality Assurance | 0.25d | 2026-11-06 11:50 | 2026-11-06 14:50 | 38 | 2026-11-12 08:00 | 2026-11-12 10:00 | Nicho QA |
| 40 | 1.2.2 | **UC-10 Generate Operational Report** | 1.25d | 2026-11-06 14:50 | 2026-11-07 16:50 |  | 2026-11-12 10:00 | 2026-11-13 13:00 |  |
| 41 | 1.2.2.1 | Front-End | 0.5d | 2026-11-06 14:50 | 2026-11-07 09:50 | 39 | 2026-11-12 10:00 | 2026-11-12 15:00 | Nicho FD |
| 42 | 1.2.2.2 | Back-End | 0.5d | 2026-11-07 09:50 | 2026-11-07 14:50 | 41 | 2026-11-12 15:00 | 2026-11-13 10:00 | Nicho BD |
| 43 | 1.2.2.3 | Quality Assurance | 0.25d | 2026-11-07 14:50 | 2026-11-07 16:50 | 42 | 2026-11-13 10:00 | 2026-11-13 13:00 | Nicho QA |
| 44 | 1.2.3 | **UC-11 Manage Retention Campaigns** | 2.5d | 2026-11-07 16:50 | 2026-11-10 11:50 |  | 2026-11-13 13:00 | 2026-11-15 17:00 |  |
| 45 | 1.2.3.1 | Front-End | 1d | 2026-11-07 16:50 | 2026-11-08 16:50 | 43 | 2026-11-13 13:00 | 2026-11-14 13:00 | Nicho FD |
| 46 | 1.2.3.2 | Back-End | 1d | 2026-11-08 16:50 | 2026-11-09 16:50 | 45 | 2026-11-14 13:00 | 2026-11-15 13:00 | Nicho BD |
| 47 | 1.2.3.3 | Quality Assurance | 0.5d | 2026-11-09 16:50 | 2026-11-10 11:50 | 46 | 2026-11-15 13:00 | 2026-11-15 17:00 | Nicho QA |
| 48 | 1.3 | **After Lab 2** | 5d | 2026-11-10 11:50 | 2026-11-15 11:50 |  | 2026-11-16 08:00 | 2026-11-20 17:00 |  |
| 49 | 1.3.1 | Fix and Polish Lab 1 and 2 | 5d | 2026-11-10 11:50 | 2026-11-15 11:50 | 47 | 2026-11-16 08:00 | 2026-11-20 17:00 | Nicho FD |
| 50 | 1.4 | **Final · Tenant C + Master** | 21d | 2026-11-15 11:50 | 2026-12-06 11:50 |  | 2026-11-21 08:00 | 2026-12-11 17:00 |  |
| 51 | 1.4.1 | **UC-12 Manage Branches** | 7d | 2026-11-15 11:50 | 2026-11-22 11:50 |  | 2026-11-21 08:00 | 2026-11-27 17:00 |  |
| 52 | 1.4.1.1 | Front-End | 3d | 2026-11-15 11:50 | 2026-11-18 11:50 | 49 | 2026-11-21 08:00 | 2026-11-23 17:00 | Nicho FD |
| 53 | 1.4.1.2 | Back-End | 3d | 2026-11-18 11:50 | 2026-11-21 11:50 | 52 | 2026-11-24 08:00 | 2026-11-26 17:00 | Nicho BD |
| 54 | 1.4.1.3 | Quality Assurance | 1d | 2026-11-21 11:50 | 2026-11-22 11:50 | 53 | 2026-11-27 08:00 | 2026-11-27 17:00 | Nicho QA |

| ID | WBS | Task | Duration | Start | Finish | Predecessors | Baseline start | Baseline finish | Resources |
| --- | --- | --- | --- | --- | --- | --- | --- | --- | --- |
| 55 | 1.4.2 | **UC-13 Manage Tenants** | 7d | 2026-11-22 11:50 | 2026-11-29 11:50 |  | 2026-11-28 08:00 | 2026-12-04 17:00 |  |
| 56 | 1.4.2.1 | Front-End | 3d | 2026-11-22 11:50 | 2026-11-25 11:50 | 54 | 2026-11-28 08:00 | 2026-11-30 17:00 | Nicho FD |
| 57 | 1.4.2.2 | Back-End | 3d | 2026-11-25 11:50 | 2026-11-28 11:50 | 56 | 2026-12-01 08:00 | 2026-12-03 17:00 | Nicho BD |
| 58 | 1.4.2.3 | Quality Assurance | 1d | 2026-11-28 11:50 | 2026-11-29 11:50 | 57 | 2026-12-04 08:00 | 2026-12-04 17:00 | Nicho QA |
| 59 | 1.4.3 | **UC-14 Manage Subscriptions** | 3.5d | 2026-11-29 11:50 | 2026-12-02 16:50 |  | 2026-12-05 08:00 | 2026-12-08 13:00 |  |
| 60 | 1.4.3.1 | Front-End | 1.5d | 2026-11-29 11:50 | 2026-11-30 16:50 | 58 | 2026-12-05 08:00 | 2026-12-06 13:00 | Nicho FD |
| 61 | 1.4.3.2 | Back-End | 1.5d | 2026-11-30 16:50 | 2026-12-02 11:50 | 60 | 2026-12-06 13:00 | 2026-12-07 17:00 | Nicho BD |
| 62 | 1.4.3.3 | Quality Assurance | 0.5d | 2026-12-02 11:50 | 2026-12-02 16:50 | 61 | 2026-12-08 08:00 | 2026-12-08 13:00 | Nicho QA |
| 63 | 1.4.4 | **UC-15 View Platform Insights** | 3.5d | 2026-12-02 16:50 | 2026-12-06 11:50 |  | 2026-12-08 13:00 | 2026-12-11 17:00 |  |
| 64 | 1.4.4.1 | Front-End | 1.5d | 2026-12-02 16:50 | 2026-12-04 11:50 | 62 | 2026-12-08 13:00 | 2026-12-09 17:00 | Nicho FD |
| 65 | 1.4.4.2 | Back-End | 1.5d | 2026-12-04 11:50 | 2026-12-05 16:50 | 64 | 2026-12-10 08:00 | 2026-12-11 13:00 | Nicho BD |
| 66 | 1.4.4.3 | Quality Assurance | 0.5d | 2026-12-05 16:50 | 2026-12-06 11:50 | 65 | 2026-12-11 13:00 | 2026-12-11 17:00 | Nicho QA |
| 67 | 1.5 | **Testing** | 3d | 2026-12-06 11:50 | 2026-12-09 11:50 |  | 2026-12-12 08:00 | 2026-12-14 17:00 |  |
| 68 | 1.5.1 | Final Testing | 3d | 2026-12-06 11:50 | 2026-12-09 11:50 | 66 | 2026-12-12 08:00 | 2026-12-14 17:00 | Nicho QA |
| 69 | 1.6 | Hosting | 1d | 2026-10-30 08:00 | 2026-10-30 17:00 |  | 2026-10-30 08:00 | 2026-10-30 17:00 | Hosting |
| 70 | 1.7 | Domain | 1d | 2026-10-30 08:00 | 2026-10-30 17:00 |  | 2026-10-30 08:00 | 2026-10-30 17:00 | Domain |
| 71 | 1.8 | Cloud Database | 1d | 2026-10-30 08:00 | 2026-10-30 17:00 |  | 2026-10-30 08:00 | 2026-10-30 17:00 | Cloud Database |
